Schedule from MS Project, 2018-03-12 to 2018-06-18.
Microsoft

## Calendars

- 标准: Mon-Fri 08:00-12:00, 13:00-17:00; Sat-Sun off.

## Resources

| Resource |
| --- |
| 章浩文 |
| 周琳婕 |
| 陈厅 |

## Schedule

| ID | WBS | Task | Type | Duration | Start | Finish | Predecessors | Total slack | Constraint | Resources | Work |
| --- | --- | --- | --- | --- | --- | --- | --- | --- | --- | --- | --- |
| 1 | 1 | **软件开发** |  | 71d | 2018-03-12 | 2018-06-18 |  | 0d |  | 陈厅; 章浩文; 周琳婕 | 4880h |
| 2 | 1.1 | **项目调研** |  | 6d | 2018-03-12 | 2018-03-19 |  | 0d |  | 陈厅; 章浩文; 周琳婕 | 192h |
| 3 | 1.1.1 | 确定项目范围 |  | 1d | 2018-03-12 | 2018-03-12 |  | 0d | start no earlier than 2018-03-12 | 周琳婕 | 8h |
| 4 | 1.1.2 | 部门调研 |  | 1d | 2018-03-13 | 2018-03-13 | 3 | 0d | start no earlier than 2018-03-12 | 周琳婕 | 8h |
| 5 | 1.1.3 | 系统功能与性能分析 |  | 2d | 2018-03-14 | 2018-03-15 | 4 | 0d | start no earlier than 2018-03-13 | 陈厅 | 16h |
| 6 | 1.1.4 | 绘制系统流程图 |  | 1d | 2018-03-16 | 2018-03-16 | 5 | 0d | start no earlier than 2018-03-14 | 章浩文 | 8h |
| 7 | 1.1.5 | 确认软硬件配置 |  | 1d | 2018-03-19 | 2018-03-19 | 6 | 0d | start no earlier than 2018-03-15 | 章浩文 | 8h |
| 8 | 1.1.6 | 完成项目调研 | milestone | 0d | 2018-03-19 | 2018-03-19 | 7 | 0d |  |  |  |
| 9 | 1.2 | **可行性分析** |  | 8d | 2018-03-20 | 2018-03-29 | 2 | 0d |  | 陈厅; 章浩文; 周琳婕 | 296h |
| 10 | 1.2.1 | 确认可行性分析的前提 |  | 1d | 2018-03-20 | 2018-03-20 |  | 0d |  | 周琳婕 | 8h |
| 11 | 1.2.2 | 分析功能可行性 |  | 1d | 2018-03-21 | 2018-03-21 | 10 | 0d |  | 周琳婕 | 8h |
| 12 | 1.2.3 | 分析软硬件开发环境可行性 |  | 1d | 2018-03-22 | 2018-03-22 | 11 | 0d |  | 陈厅 | 8h |
| 13 | 1.2.4 | **分析经济可行性** |  | 1d | 2018-03-23 | 2018-03-23 | 12 | 0d |  | 章浩文 | 8h |
| 14 | 1.2.4.1 | 确认预算 |  | 1d | 2018-03-23 | 2018-03-23 |  | 0d |  |  |  |
| 15 | 1.2.4.2 | 预期经济效益 |  | 1d | 2018-03-23 | 2018-03-23 |  | 0d |  |  |  |
| 16 | 1.2.4.3 | 市场预测 |  | 1d | 2018-03-23 | 2018-03-23 |  | 0d |  |  |  |
| 17 | 1.2.5 | 分析技术可行性 |  | 1d | 2018-03-26 | 2018-03-26 | 13 | 0d |  | 陈厅; 章浩文; 周琳婕 | 24h |
| 18 | 1.2.6 | 分析社会因素可行性 |  | 1d | 2018-03-27 | 2018-03-27 | 17 | 0d |  | 陈厅; 章浩文 | 16h |
| 19 | 1.2.7 | 分析操作可行性 |  | 1d | 2018-03-28 | 2018-03-28 | 18 | 0d |  | 章浩文; 周琳婕 | 16h |
| 20 | 1.2.8 | 分析用户使用可行性 |  | 1d | 2018-03-29 | 2018-03-29 | 19 | 0d |  | 陈厅; 周琳婕 | 16h |
| 21 | 1.2.9 | 完成可行性分析工作 | milestone | 0d | 2018-03-29 | 2018-03-29 | 20 | 0d |  |  |  |
| 22 | 1.3 | **需求分析** |  | 3d | 2018-03-29 | 2018-04-03 | 9 | 0d |  | 陈厅; 章浩文; 周琳婕 | 144h |
| 23 | 1.3.1 | **确认项目背景** |  | 0d | 2018-03-29 | 2018-03-29 |  | 0d |  | 陈厅; 章浩文; 周琳婕 |  |
| 24 | 1.3.1.1 | 制定系统整体结构 | milestone | 0d | 2018-03-29 | 2018-03-29 |  | 0d |  |  |  |

| ID | WBS | Task | Type | Duration | Start | Finish | Predecessors | Total slack | Resources | Work |
| --- | --- | --- | --- | --- | --- | --- | --- | --- | --- | --- |
| 25 | 1.3.2 | **确认功能需求** |  | 1d | 2018-03-30 | 2018-03-30 | 23 | 0d | 陈厅; 章浩文; 周琳婕 | 24h |
| 26 | 1.3.2.1 | 绘制系统数据流图 |  | 1d | 2018-03-30 | 2018-03-30 |  | 0d |  |  |
| 27 | 1.3.2.2 | 数据词典 |  | 1d | 2018-03-30 | 2018-03-30 |  | 0d |  |  |
| 28 | 1.3.2.3 | E-R模型 |  | 1d | 2018-03-30 | 2018-03-30 |  | 0d |  |  |
| 29 | 1.3.3 | 确认性能需求 |  | 1d | 2018-04-02 | 2018-04-02 | 25 | 0d | 陈厅; 章浩文; 周琳婕 | 24h |
| 30 | 1.3.4 | **确认项目实施计划** |  | 1d | 2018-04-03 | 2018-04-03 | 29 | 0d | 陈厅; 章浩文; 周琳婕 | 24h |
| 31 | 1.3.4.1 | 安排项目进度 |  | 1d | 2018-04-03 | 2018-04-03 |  | 0d |  |  |
| 32 | 1.3.4.2 | 进行项目预算 |  | 1d | 2018-04-03 | 2018-04-03 |  | 0d |  |  |
| 33 | 1.3.5 | 完成需求分析工作 | milestone | 0d | 2018-04-03 | 2018-04-03 | 30 | 0d |  |  |
| 34 | 1.4 | **设计** |  | 12d | 2018-04-04 | 2018-04-19 | 22 | 0d | 陈厅; 章浩文; 周琳婕 | 576h |
| 35 | 1.4.1 | 绘制系统软件结构图 |  | 1d | 2018-04-04 | 2018-04-04 |  | 0d | 陈厅; 章浩文; 周琳婕 | 24h |
| 36 | 1.4.2 | **确认数据模型** |  | 4d | 2018-04-05 | 2018-04-10 | 35 | 0d | 陈厅; 章浩文; 周琳婕 | 96h |
| 37 | 1.4.2.1 | 完成数据库概念设计 |  | 2d | 2018-04-05 | 2018-04-06 |  | 0d |  |  |
| 38 | 1.4.2.2 | 完成数据库逻辑设计 |  | 2d | 2018-04-09 | 2018-04-10 | 37 | 0d |  |  |
| 39 | 1.4.2.3 | 完成数据库物理设计 |  | 2d | 2018-04-09 | 2018-04-10 | 37 | 0d |  |  |
| 40 | 1.4.3 | 确认系统总体设计 |  | 1d | 2018-04-11 | 2018-04-11 | 36 | 0d | 陈厅; 章浩文; 周琳婕 | 24h |
| 41 | 1.4.4 | **人机交互设计** |  | 3d | 2018-04-12 | 2018-04-16 | 40 | 0d | 陈厅; 章浩文; 周琳婕 | 72h |
| 42 | 1.4.4.1 | 软件界面设计 |  | 1d | 2018-04-12 | 2018-04-12 |  | 0d |  |  |
| 43 | 1.4.4.2 | 界面功能设计 |  | 2d | 2018-04-13 | 2018-04-16 | 42 | 0d |  |  |
| 44 | 1.4.5 | 系统模块设计 |  | 1d | 2018-04-17 | 2018-04-17 | 41 | 0d | 陈厅; 章浩文; 周琳婕 | 24h |
| 45 | 1.4.6 | 系统接口设计 |  | 1d | 2018-04-18 | 2018-04-18 | 44 | 0d | 陈厅; 章浩文; 周琳婕 | 24h |
| 46 | 1.4.7 | **绘制UML类图模型** |  | 1d | 2018-04-19 | 2018-04-19 | 45 | 0d | 陈厅; 章浩文; 周琳婕 | 24h |
| 47 | 1.4.7.1 | 绘制系统用例图 |  | 1d | 2018-04-19 | 2018-04-19 |  | 0d |  |  |
| 48 | 1.4.7.2 | 绘制类图 |  | 1d | 2018-04-19 | 2018-04-19 |  | 0d |  |  |
| 49 | 1.4.7.3 | 绘制构建图 |  | 1d | 2018-04-19 | 2018-04-19 |  | 0d |  |  |
| 50 | 1.4.7.4 | 绘制协助图 |  | 1d | 2018-04-19 | 2018-04-19 |  | 0d |  |  |
| 51 | 1.4.7.5 | 绘制顺序图 |  | 1d | 2018-04-19 | 2018-04-19 |  | 0d |  |  |
| 52 | 1.4.8 | 完成设计工作 | milestone | 0d | 2018-04-19 | 2018-04-19 | 46 | 0d |  |  |

| ID | WBS | Task | Type | Duration | Start | Finish | Predecessors | Total slack | Resources | Work |
| --- | --- | --- | --- | --- | --- | --- | --- | --- | --- | --- |
| 53 | 1.5 | **开发** |  | 21d | 2018-04-20 | 2018-05-18 | 34 | 0d | 陈厅; 章浩文; 周琳婕 | 960h |
| 54 | 1.5.1 | 审阅功能规范 |  | 2d | 2018-04-20 | 2018-04-23 |  | 0d |  |  |
| 55 | 1.5.2 | 确定模块化/分层设计参数 |  | 2d | 2018-04-24 | 2018-04-25 | 54 | 0d | 陈厅; 章浩文; 周琳婕 | 48h |
| 56 | 1.5.3 | 分派任务给开发人员 |  | 1d | 2018-04-26 | 2018-04-26 | 55 | 0d | 陈厅; 章浩文; 周琳婕 | 24h |
| 57 | 1.5.4 | 编写代码 |  | 10d | 2018-04-27 | 2018-05-10 | 56 | 0d | 陈厅; 章浩文; 周琳婕 | 240h |
| 58 | 1.5.5 | 开发人员测试(初步调试) |  | 6d | 2018-05-11 | 2018-05-18 | 57 | 0d | 陈厅; 章浩文; 周琳婕 | 144h |
| 59 | 1.5.6 | 开发完成 | milestone | 0d | 2018-05-18 | 2018-05-18 | 58 | 0d |  |  |
| 60 | 1.6 | **测试** |  | 21d | 2018-05-21 | 2018-06-18 | 53 | 0d | 陈厅; 章浩文; 周琳婕 | 1008h |
| 61 | 1.6.1 | 制定单元测试计划 |  | 1d | 2018-05-21 | 2018-05-21 |  | 0d | 陈厅; 章浩文; 周琳婕 | 24h |
| 62 | 1.6.2 | 制定整体测试计划 |  | 1d | 2018-05-22 | 2018-05-22 | 61 | 0d | 陈厅; 章浩文; 周琳婕 | 24h |
| 63 | 1.6.3 | **单元测试** |  | 10d | 2018-05-23 | 2018-06-05 | 62 | 0d | 陈厅; 章浩文; 周琳婕 | 240h |
| 64 | 1.6.3.1 | 审阅模块化代码 |  | 2d | 2018-05-23 | 2018-05-24 |  | 0d |  |  |
| 65 | 1.6.3.2 | 测试组件模块是否符合产品规范 |  | 2d | 2018-05-25 | 2018-05-28 | 64 | 0d |  |  |
| 66 | 1.6.3.3 | 找出不符合产品规范的异常情况 |  | 2d | 2018-05-29 | 2018-05-30 | 65 | 0d |  |  |
| 67 | 1.6.3.4 | 修改代码 |  | 2d | 2018-05-31 | 2018-06-01 | 66 | 0d |  |  |
| 68 | 1.6.3.5 | 重新测试经过修改的代码 |  | 2d | 2018-06-04 | 2018-06-05 | 67 | 0d |  |  |
| 69 | 1.6.3.6 | 完成单元测试 | milestone | 0d | 2018-06-05 | 2018-06-05 | 68 | 0d |  |  |
| 70 | 1.6.4 | **整体测试** |  | 9d | 2018-06-06 | 2018-06-18 | 63 | 0d | 陈厅; 章浩文; 周琳婕 | 216h |
| 71 | 1.6.4.1 | 测试模块集成情况 |  | 2d | 2018-06-06 | 2018-06-07 |  | 0d |  |  |
| 72 | 1.6.4.2 | 找出不符合规范的异常情况 |  | 2d | 2018-06-08 | 2018-06-11 | 71 | 0d |  |  |
| 73 | 1.6.4.3 | 修改代码 |  | 2d | 2018-06-12 | 2018-06-13 | 72 | 0d |  |  |
| 74 | 1.6.4.4 | 重新测试经过修改的代码 |  | 3d | 2018-06-14 | 2018-06-18 | 73 | 0d |  |  |
| 75 | 1.6.4.5 | 完成整体测试 | milestone | 0d | 2018-06-18 | 2018-06-18 | 74 | 0d |  |  |
| 76 | 1.7 | 软件开发结束 | milestone | 0d | 2018-06-18 | 2018-06-18 | 60 | 0d |  |  |
